# SLNR Santos — CT 11481051

Schedule from MS Project XML, 2026-04-01 to 2028-07-14.

## Schedule

| ID | WBS | Task | Duration | Start | Finish | Predecessors |
| --- | --- | --- | --- | --- | --- | --- |
| 1 | 1 | **Verde e Teteu (2621m)** |  | 2026-04-01 | 2026-11-13 |  |
| 2 | 1.1 | Topografia + Cadastro | 15d | 2026-04-01 | 2026-04-22 |  |
| 3 | 1.2 | Projeto + Planejamento | 10d | 2026-04-22 | 2026-05-06 | 2 |
| 4 | 1.3 | Escavação | 35d | 2026-05-06 | 2026-06-24 | 3 |
| 5 | 1.4 | Assentamento Tubulação | 27d | 2026-06-24 | 2026-07-31 | 4 |
| 6 | 1.5 | Montagem PVs/PIs | 18d | 2026-07-31 | 2026-08-26 | 5 |
| 7 | 1.6 | Reaterro + Compactação | 18d | 2026-08-26 | 2026-09-21 | 6 |
| 8 | 1.7 | Teste Estanqueidade | 5d | 2026-09-21 | 2026-09-28 | 7 |
| 9 | 1.8 | Lavagem + Coliformes | 7d | 2026-09-28 | 2026-10-07 | 8 |
| 10 | 1.9 | Pavimentação CBUQ | 18d | 2026-09-21 | 2026-10-15 | 7 |
| 11 | 1.10 | Cadastro NTS 292 | 10d | 2026-09-28 | 2026-10-12 | 8 |
| 12 | 1.11 | Ligações Prediais | 27d | 2026-10-07 | 2026-11-13 | 9 |
| 13 | 1.12 | Medição + BM | 5d | 2026-10-12 | 2026-10-19 | 11 |
| 14 | 2 | **São Manoel (1275m)** |  | 2026-04-15 | 2026-10-13 |  |
| 15 | 2.1 | Topografia + Cadastro | 15d | 2026-04-15 | 2026-05-06 |  |
| 16 | 2.2 | Projeto + Planejamento | 10d | 2026-05-06 | 2026-05-20 | 15 |
| 17 | 2.3 | Escavação | 26d | 2026-05-20 | 2026-06-25 | 16 |
| 18 | 2.4 | Assentamento Tubulação | 20d | 2026-06-25 | 2026-07-23 | 17 |
| 19 | 2.5 | Montagem PVs/PIs | 13d | 2026-07-23 | 2026-08-11 | 18 |
| 20 | 2.6 | Reaterro + Compactação | 13d | 2026-08-11 | 2026-08-28 | 19 |
| 21 | 2.7 | Teste Estanqueidade | 5d | 2026-08-28 | 2026-09-04 | 20 |
| 22 | 2.8 | Lavagem + Coliformes | 7d | 2026-09-04 | 2026-09-15 | 21 |
| 23 | 2.9 | Pavimentação CBUQ | 13d | 2026-08-28 | 2026-09-16 | 20 |
| 24 | 2.10 | Cadastro NTS 292 | 10d | 2026-09-04 | 2026-09-18 | 21 |
| 25 | 2.11 | Ligações Prediais | 20d | 2026-09-15 | 2026-10-13 | 22 |
| 26 | 2.12 | Medição + BM | 5d | 2026-09-18 | 2026-09-25 | 24 |

| ID | WBS | Task | Duration | Start | Finish | Predecessors |
| --- | --- | --- | --- | --- | --- | --- |
| 27 | 3 | **Vila Israel (11509m)** |  | 2026-04-29 | 2028-07-14 |  |
| 28 | 3.1 | Topografia + Cadastro | 15d | 2026-04-29 | 2026-05-20 |  |
| 29 | 3.2 | Projeto + Planejamento | 10d | 2026-05-20 | 2026-06-03 | 28 |
| 30 | 3.3 | Escavação | 154d | 2026-06-03 | 2027-01-05 | 29 |
| 31 | 3.4 | Assentamento Tubulação | 116d | 2027-01-05 | 2027-06-16 | 30 |
| 32 | 3.5 | Montagem PVs/PIs | 77d | 2027-06-16 | 2027-10-01 | 31 |
| 33 | 3.6 | Reaterro + Compactação | 77d | 2027-10-01 | 2028-01-18 | 32 |
| 34 | 3.7 | Teste Estanqueidade | 5d | 2028-01-18 | 2028-01-25 | 33 |
| 35 | 3.8 | Lavagem + Coliformes | 7d | 2028-01-25 | 2028-02-03 | 34 |
| 36 | 3.9 | Pavimentação CBUQ | 77d | 2028-01-18 | 2028-05-04 | 33 |
| 37 | 3.10 | Cadastro NTS 292 | 10d | 2028-01-25 | 2028-02-08 | 34 |
| 38 | 3.11 | Ligações Prediais | 116d | 2028-02-03 | 2028-07-14 | 35 |
| 39 | 3.12 | Medição + BM | 5d | 2028-02-08 | 2028-02-15 | 37 |
| 40 | 4 | **Pantanal Baixo (6720m)** |  | 2026-05-13 | 2027-09-20 |  |
| 41 | 4.1 | Topografia + Cadastro | 15d | 2026-05-13 | 2026-06-03 |  |
| 42 | 4.2 | Projeto + Planejamento | 10d | 2026-06-03 | 2026-06-17 | 41 |
| 43 | 4.3 | Escavação | 90d | 2026-06-17 | 2026-10-21 | 42 |
| 44 | 4.4 | Assentamento Tubulação | 68d | 2026-10-21 | 2027-01-25 | 43 |
| 45 | 4.5 | Montagem PVs/PIs | 45d | 2027-01-25 | 2027-03-29 | 44 |
| 46 | 4.6 | Reaterro + Compactação | 45d | 2027-03-29 | 2027-05-31 | 45 |
| 47 | 4.7 | Teste Estanqueidade | 5d | 2027-05-31 | 2027-06-07 | 46 |
| 48 | 4.8 | Lavagem + Coliformes | 7d | 2027-06-07 | 2027-06-16 | 47 |
| 49 | 4.9 | Pavimentação CBUQ | 45d | 2027-05-31 | 2027-08-02 | 46 |
| 50 | 4.10 | Cadastro NTS 292 | 10d | 2027-06-07 | 2027-06-21 | 47 |
| 51 | 4.11 | Ligações Prediais | 68d | 2027-06-16 | 2027-09-20 | 48 |
| 52 | 4.12 | Medição + BM | 5d | 2027-06-21 | 2027-06-28 | 50 |

| ID | WBS | Task | Duration | Start | Finish | Predecessors |
| --- | --- | --- | --- | --- | --- | --- |
| 53 | 5 | **Vila Criadores (4138m)** |  | 2026-05-27 | 2027-09-01 |  |
| 54 | 5.1 | Topografia + Cadastro | 15d | 2026-05-27 | 2026-06-17 |  |
| 55 | 5.2 | Projeto + Planejamento | 10d | 2026-06-17 | 2026-07-01 | 54 |
| 56 | 5.3 | Escavação | 83d | 2026-07-01 | 2026-10-26 | 55 |
| 57 | 5.4 | Assentamento Tubulação | 63d | 2026-10-26 | 2027-01-21 | 56 |
| 58 | 5.5 | Montagem PVs/PIs | 42d | 2027-01-21 | 2027-03-22 | 57 |
| 59 | 5.6 | Reaterro + Compactação | 42d | 2027-03-22 | 2027-05-19 | 58 |
| 60 | 5.7 | Teste Estanqueidade | 5d | 2027-05-19 | 2027-05-26 | 59 |
| 61 | 5.8 | Lavagem + Coliformes | 7d | 2027-05-26 | 2027-06-04 | 60 |
| 62 | 5.9 | Pavimentação CBUQ | 42d | 2027-05-19 | 2027-07-16 | 59 |
| 63 | 5.10 | Cadastro NTS 292 | 10d | 2027-05-26 | 2027-06-09 | 60 |
| 64 | 5.11 | Ligações Prediais | 63d | 2027-06-04 | 2027-09-01 | 61 |
| 65 | 5.12 | Medição + BM | 5d | 2027-06-09 | 2027-06-16 | 63 |
| 66 | 6 | **João Carlos (3000m)** |  | 2026-06-10 | 2027-05-21 |  |
| 67 | 6.1 | Topografia + Cadastro | 15d | 2026-06-10 | 2026-07-01 |  |
| 68 | 6.2 | Projeto + Planejamento | 10d | 2026-07-01 | 2026-07-15 | 67 |
| 69 | 6.3 | Escavação | 60d | 2026-07-15 | 2026-10-07 | 68 |
| 70 | 6.4 | Assentamento Tubulação | 45d | 2026-10-07 | 2026-12-09 | 69 |
| 71 | 6.5 | Montagem PVs/PIs | 30d | 2026-12-09 | 2027-01-20 | 70 |
| 72 | 6.6 | Reaterro + Compactação | 30d | 2027-01-20 | 2027-03-03 | 71 |
| 73 | 6.7 | Teste Estanqueidade | 5d | 2027-03-03 | 2027-03-10 | 72 |
| 74 | 6.8 | Lavagem + Coliformes | 7d | 2027-03-10 | 2027-03-19 | 73 |
| 75 | 6.9 | Pavimentação CBUQ | 30d | 2027-03-03 | 2027-04-14 | 72 |
| 76 | 6.10 | Cadastro NTS 292 | 10d | 2027-03-10 | 2027-03-24 | 73 |
| 77 | 6.11 | Ligações Prediais | 45d | 2027-03-19 | 2027-05-21 | 74 |
| 78 | 6.12 | Medição + BM | 5d | 2027-03-24 | 2027-03-31 | 76 |
